# FT8606验证准备及自动测试工具开发

Schedule from MS Project, 2016-12-01 to 2017-02-10, A marks actual dates.
微软中国

## Calendars

- 标准: Mon-Fri 08:00-12:00, 13:00-17:00; Sat-Sun off.

## Resources

| Resource |
| --- |
| 黄海舰(负责人）&康品洋&Jack(负责人） |
| 黄海舰(负责人）&李燕娟&康品洋&Jack(负责人） |
| 邓朋(负责人）&康品洋&Jack(负责人） |
| 刘伯政(负责人）&李燕娟&叶大能 &赖政忠 |
| 黄海舰(负责人）&叶大能&李燕娟&赖政忠(负责人） |
| 黄海舰&林乔嵩(负责人） |
| 徐永锋(负责人）&邓朋&卢冰锋 |
| 徐永锋&刘伯政(负责人） |
| 吴勋? |
| 徐永锋&吴勋&刘伯政(负责人） |
| 吴勋&刘伯政(负责人） |
| 曾睿(负责人）&吴勋&林建军&刘伯政 |
| 曾睿(负责人）&林建军&刘伯政 |
| 辛坤鹏&林建军(负责人） |
| 叶大能(负责人） |
| 高强（负责人）。。。 |
| 黄海舰&林伟伟&邓朋&辛坤鹏&卢冰锋(负责人）&高强+RD相关人员 |
| 黄海舰&林伟伟(负责人）&高强+RD相关人员 |
| 刘伯政(负责人）&黄海舰&辛坤鹏&高强+RD相关人员 |
| 黄海舰(负责人）&高强+RD相关人员 |
| 郭荣兴(负责人）&黄海舰 |
| 郭荣兴(负责人）&刘伯政 |
| 吴勋&卢冰锋 |
| 吴勋(负责人）&卢冰锋 |
| 高强（负责人） |
| 辛昆鹏 |
| 辛昆鹏/林建军 |
| 林建军 |
| 唐喆炜 |
| 谢旭 |
| 林填达 |
| 唐苏军 |
| 李森 |

## Schedule

| ID | WBS | Task | Duration | Start | Finish | Predecessors | Remaining | Total slack | Free slack | Constraint | Resources | Work |
| --- | --- | --- | --- | --- | --- | --- | --- | --- | --- | --- | --- | --- |
| 1 | 1 | **FT8836 FPGA测试** | 52d? | 2016-12-01 A | 2017-02-10 |  | 52d? | 0d |  |  |  | 1292h |
| 2 | 1.1 | **mcu模块测试** | 33d? | 2016-12-01 A | 2017-01-16 |  | 33d? | 19d |  |  |  | 744h |
| 3 | 1.1.1 | memory读写测试 | 1d | 2016-12-15 | 2016-12-15 | 13 |  | 0d |  | start no earlier than 2016-12-15 | 谢旭 | 8h |
| 4 | 1.1.2 | GPIO/LED模块测试 | 2d | 2016-12-16 A | 2016-12-19 | 3 | 2d | 39d |  | finish no earlier than 2016-12-16 | 谢旭 | 16h |
| 5 | 1.1.3 | Wake up(Soc 各个模块) | 4d | 2016-12-15 | 2016-12-20 |  |  | 38d |  | start no earlier than 2016-12-15 | 谢旭 | 32h |
| 6 | 1.1.4 | CGU模块测试 | 7d | 2016-12-22 | 2016-12-30 |  |  | -8d | 0d | finish no earlier than 2016-12-30 | 谢旭 | 56h |
| 7 | 1.1.5 | Reset复位测试 | 2d | 2016-12-21 A | 2016-12-22 | 6 | 2d | 0d |  | finish no earlier than 2016-12-20 | 谢旭 | 16h |
| 8 | 1.1.6 | Membist模块测试 | 1d | 2016-12-23 A | 2016-12-23 | 7 | 1d | 32d | 0d | finish no earlier than 2016-12-22 | 谢旭 | 8h |
| 9 | 1.1.7 | GPIO/LED模块测试 | 1d | 2016-12-26 | 2016-12-26 | 8 |  | 32d | 0d |  | 谢旭 | 8h |
| 10 | 1.1.8 | 中断/Wakeup模块测试 | 1d | 2016-12-27 | 2016-12-27 | 9 |  | 32d | 0d |  | 谢旭 | 8h |
| 11 | 1.1.9 | SFR/XSI/CAL/AFE/CGU寄存器读写测试 | 1d | 2016-12-28 | 2016-12-28 | 10 |  | 32d |  |  | 谢旭 | 8h |
| 12 | 1.1.10 | SOC负责模块回归测试 | 9d? | 2016-12-28 | 2017-01-09 |  |  | 24d |  | start no earlier than 2016-12-28 | 谢旭 | 72h |
| 13 | 1.1.11 | KEIL环境搭建，头文件整理 | 10d | 2016-12-01 | 2016-12-14 |  |  | 0d |  | finish no earlier than 2016-12-14 | 林填达 | 80h |
| 14 | 1.1.12 | Uart/Timer/RTC/Counter | 3d? | 2016-12-15 | 2016-12-19 |  |  | 32d | 0d | start no earlier than 2016-12-15 | 林填达 | 24h |
| 15 | 1.1.13 | binmerge | 3d? | 2016-12-20 | 2016-12-22 | 14 |  | 32d | 1d |  | 林填达 | 24h |
| 16 | 1.1.14 | PramBoot代码编写，FT工具测试调试 | 4d | 2016-12-26 | 2016-12-29 | 15 |  | 31d |  | finish no earlier than 2016-12-29 | 林填达 | 32h |
| 17 | 1.1.15 | Cal模块验证 | 5d | 2016-12-30 | 2017-01-05 |  |  | 26d |  | start no earlier than 2016-12-30 | 林填达 | 40h |
| 18 | 1.1.16 | SOC CAL模块回归测试 | 3d | 2017-01-06 | 2017-01-10 |  |  | 23d |  | finish no earlier than 2017-01-10 | 林填达 | 24h |
| 19 | 1.1.17 | I2c模块 | 3d? | 2016-12-15 | 2016-12-19 |  |  | 22d | 0d | finish no earlier than 2016-12-19 | 唐苏军 | 24h |
| 20 | 1.1.18 | SPI1/SPI0 (新增模式) | 10d? | 2016-12-20 | 2017-01-02 | 19 |  | 22d | 0d |  | 唐苏军 | 80h |
| 21 | 1.1.19 | BootRom调试测试 | 7d? | 2017-01-03 | 2017-01-11 | 20 |  | 22d |  |  | 唐苏军 | 56h |
| 22 | 1.1.20 | RomBoot编写测试 | 11d? | 2016-12-01 | 2016-12-15 |  |  | 41d |  | start no earlier than 2016-12-01 | 唐苏军 | 88h |
| 23 | 1.1.21 | XBUS/LCD读写initial/reload | 5d? | 2017-01-10 | 2017-01-16 |  |  | 19d |  | finish no earlier than 2017-01-16 | 唐苏军 | 40h |
| 24 | 1.2 | **AFE模块测试** | 24d? | 2017-01-10 A | 2017-02-10 |  | 24d? | 0d |  |  |  | 548h |
| 25 | 1.2.1 | XSI Reg/XSI模块测试 | 1d | 2017-01-10 A | 2017-01-10 |  | 1d | 23d |  | finish no earlier than 2017-01-10 | 李森 | 8h |
| 26 | 1.2.2 | SSI模块测试 | 1d | 2017-01-11 A | 2017-01-11 |  | 1d | 20d | 0d |  | 李森 | 8h |
| 27 | 1.2.3 | AFE Reg读写测试 | 2.5d | 2017-01-11 A | 2017-01-13 | 26 | 2.5d | 20d |  |  | 李森 | 20h |
| 28 | 1.2.4 | AFE ADC板硬件调试 | 2d | 2017-01-10 | 2017-01-11 |  |  | 19d | 0d | start no earlier than 2017-01-10 | 李森 | 16h |
| 29 | 1.2.5 | AFE FPGA版本及扫描时序调试 | 3d | 2017-01-12 | 2017-01-16 | 28 |  | 19d |  |  | 李森 | 24h |
| 30 | 1.2.6 | AFE Order/Tab表项 | 2d? | 2017-01-10 | 2017-01-11 |  |  | 22d |  | start no earlier than 2017-01-10 | 李森 | 16h |
| 31 | 1.2.7 | AFE ASM中断wakeup | 2d? | 2017-01-12 | 2017-01-13 |  |  | 20d |  | start no earlier than 2017-01-12 | 李森 | 16h |
| 32 | 1.2.8 | 硬件噪声测试 | 2d? | 2017-01-16 | 2017-01-17 |  |  | 18d |  | start no earlier than 2017-01-16 | 李森 | 16h |
| 33 | 1.2.9 | 各种扫描模式大坑，小坑，60,120hz | 6d? | 2017-01-18 | 2017-01-25 |  |  | 12d |  | start no earlier than 2017-01-18 | 李森 | 48h |
| 34 | 1.2.10 | Base跟踪，触摸检测 | 1d? | 2017-01-26 | 2017-01-26 |  |  | 11d |  | finish no earlier than 2017-01-26 | 李森 | 8h |
| 35 | 1.2.11 | 硬件CB校正 | 6d? | 2017-01-10 | 2017-01-17 |  |  | 18d |  | start no earlier than 2017-01-10 | 谢旭 | 48h |
| 36 | 1.2.12 | 硬件monitor_RTC | 6d? | 2017-01-10 | 2017-01-17 |  |  | 18d |  | start no earlier than 2017-01-10 | 林填达 | 48h |
| 37 | 1.2.13 | 互容按键 | 6d? | 2017-01-18 | 2017-01-25 |  |  | 12d |  | start no earlier than 2017-01-18 | 谢旭 | 48h |
| 38 | 1.2.14 | LCD中断，联调，各种模式切换，wakeup | 8d? | 2017-01-17 | 2017-01-26 |  |  | 11d |  | finish no earlier than 2017-01-26 | 唐苏军 | 64h |
| 39 | 1.2.15 | SOC 回归测试 | 5d? | 2017-02-06 | 2017-02-10 |  |  | 0d |  | start no earlier than 2017-02-06 | 谢旭; 林填达 | 80h |
| 40 | 1.2.16 | AFE ASM LCD回归测试 | 5d? | 2017-02-06 | 2017-02-10 |  |  | 0d |  | start no earlier than 2017-02-06 | 李森; 唐苏军 | 80h |
